Schedule from MS Project, 2025-02-28 to 2025-05-09, costs in $.
This project was completed by: / Nathan Sikkema, 000911571 / Brendan Dileo, 000879513
This project was completed by: / ·Nathan Sikkema, 000911571 / ·Brendan Dileo, 000879513

## Calendars

- Standard: Mon-Fri 08:00-12:00, 13:00-17:00; Sat-Sun off.

## Resources

| Resource | Rate | Cost per use | Notes |
| --- | --- | --- | --- |
| Thin Clients |  | 979 | The product being used: / - DELL OptiPlex Micro Form Factor / - Cost: per item: $979.00 / Link to product: / https://www.dell.com/en-ca/shop/cty/pdp/spd/optiplex-7020-micro/s005do7020mffca_vp |
| Servers |  | 3094 | The product being used: / - ThinkSystem SR250 V3 / - Cost: per item: $3,094.00 / Link to product: / https://www.lenovo.com/ca/en/p/servers-storage/servers/racks/thinksystem-sr250-v3-rack-server/7dcla017na |
| Nathan Sikkema | 40 |  |  |
| Brendan Dileo | 35 |  |  |
| VM/Ware Licenses |  |  |  |
| Training Materials |  |  |  |
| Shipping |  |  |  |
| Baldeep singh | 32 |  |  |
| <Student 4> | 30 |  |  |

## Schedule

| ID | WBS | Task | Type | Duration | Start | Finish | Predecessors | Baseline start | Baseline finish | Baseline duration | Total slack | Free slack | Resources | Work | Cost | Baseline cost |
| --- | --- | --- | --- | --- | --- | --- | --- | --- | --- | --- | --- | --- | --- | --- | --- | --- |
| 1 | 1 | **Research** |  | 6.51d | 2025-02-28 | 2025-03-10 |  | 2025-02-28 | 2025-03-10 | 6.51d | 0d |  |  | 76.08h | 2,836.4 | 2,836.4 |
| 2 | 1.1 | Identify Server Requirements |  | 3.17d | 2025-02-28 | 2025-03-05 |  | 2025-02-28 | 2025-03-05 | 3.17d | 0d |  | Nathan Sikkema | 25.36h | 1,014.4 | 1,014.4 |
| 3 | 1.2 | Evaluate Thin Client Options |  | 3d | 2025-02-28 | 2025-03-04 |  | 2025-02-28 | 2025-03-04 | 3d | 0.17d | 0d | Brendan Dileo | 24h | 840 | 840 |
| 4 | 1.3 | Evaluate Client Needs |  | 2.17d | 2025-03-05 | 2025-03-07 | 2, 3 | 2025-03-05 | 2025-03-07 | 2.17d | 0d |  | Brendan Dileo | 17.36h | 607.6 | 607.6 |
| 5 | 1.4 | Research VM/Ware Licenses |  | 1.17d | 2025-03-07 | 2025-03-10 | 4 | 2025-03-07 | 2025-03-10 | 1.17d | 0d |  | Nathan Sikkema | 9.36h | 374.4 | 374.4 |
| 6 | 1.5 | End of Research Phase | milestone | 0d | 2025-03-10 | 2025-03-10 | 5 | 2025-03-10 | 2025-03-10 | 0d | 43.67d |  |  |  |  |  |
| 7 | 2 | **Planning** |  | 7.17d | 2025-03-06 | 2025-03-17 |  | 2025-03-06 | 2025-03-17 | 7.17d | 0d |  |  | 54.64h | 1,878.8 | 1,878.8 |
| 8 | 2.1 | Determine Project Timeline |  | 2.17d | 2025-03-06 | 2025-03-10 | 3FS+1d | 2025-03-06 | 2025-03-10 | 2.17d | 1.67d |  | <Student 4> | 17.36h | 520.8 | 520.8 |
| 9 | 2.2 | Determine Thin Client Costs |  | 1.33d | 2025-03-10 | 2025-03-11 | 5 | 2025-03-10 | 2025-03-11 | 1.33d | 0d |  | Brendan Dileo | 10.64h | 372.4 | 372.4 |
| 10 | 2.3 | Allocate Resources |  | 2d | 2025-03-11 | 2025-03-13 | 8, 9 | 2025-03-11 | 2025-03-13 | 2d | 0d |  | Brendan Dileo | 16h | 560 | 560 |
| 11 | 2.4 | Create Budget Estimates |  | 1.33d | 2025-03-13 | 2025-03-17 | 10 | 2025-03-13 | 2025-03-17 | 1.33d | 0d |  | Nathan Sikkema | 10.64h | 425.6 | 425.6 |
| 12 | 3 | **Purchasing** |  | 9.01d | 2025-03-17 | 2025-03-28 |  | 2025-03-17 | 2025-03-28 | 9.01d | 0d |  |  | 216.24h | 7,712.56 | 7,712.56 |
| 13 | 3.1 | **Purchasing Servers** |  | 9.01d | 2025-03-17 | 2025-03-28 |  | 2025-03-17 | 2025-03-28 | 9.01d | 0d |  |  | 72.08h | 2,883.2 | 2,883.2 |
| 14 | 3.1.1 | Draft Quote Request |  | 2d | 2025-03-17 | 2025-03-19 | 11 | 2025-03-17 | 2025-03-19 | 2d | 0d |  | Nathan Sikkema | 16h | 640 | 640 |
| 15 | 3.1.2 | Evaluate Quotes |  | 1.17d | 2025-03-19 | 2025-03-20 | 14 | 2025-03-19 | 2025-03-20 | 1.17d | 0d |  | Nathan Sikkema | 9.36h | 374.4 | 374.4 |
| 16 | 3.1.3 | Place Order |  | 1.17d | 2025-03-20 | 2025-03-21 | 15 | 2025-03-20 | 2025-03-21 | 1.17d | 0d |  | Nathan Sikkema | 9.36h | 374.4 | 374.4 |
| 17 | 3.1.4 | Receive Goods |  | 3.5d | 2025-03-21 | 2025-03-27 | 16 | 2025-03-21 | 2025-03-27 | 3.5d | 0d |  | Nathan Sikkema | 28h | 1,120 | 1,120 |
| 18 | 3.1.5 | Verify Order Contents |  | 1.17d | 2025-03-27 | 2025-03-28 | 17 | 2025-03-27 | 2025-03-28 | 1.17d | 0d |  | Nathan Sikkema | 9.36h | 374.4 | 374.4 |
| 19 | 3.2 | **Purchasing Clients** |  | 9.01d | 2025-03-17 | 2025-03-28 |  | 2025-03-17 | 2025-03-28 | 9.01d | 2.17d |  |  | 72.08h | 2,522.8 | 2,522.8 |
| 20 | 3.2.1 | Draft Quote Request |  | 2d | 2025-03-17 | 2025-03-19 | 11 | 2025-03-17 | 2025-03-19 | 2d | 2.17d | 0d | Brendan Dileo | 16h | 560 | 560 |
| 21 | 3.2.2 | Evaluate Quotes |  | 1.17d | 2025-03-19 | 2025-03-20 | 20 | 2025-03-19 | 2025-03-20 | 1.17d | 2.17d | 0d | Brendan Dileo | 9.36h | 327.6 | 327.6 |
| 22 | 3.2.3 | Place Order |  | 1.17d | 2025-03-20 | 2025-03-21 | 21 | 2025-03-20 | 2025-03-21 | 1.17d | 2.17d | 0d | Brendan Dileo | 9.36h | 327.6 | 327.6 |
| 23 | 3.2.4 | Receive Goods |  | 3.5d | 2025-03-21 | 2025-03-27 | 22 | 2025-03-21 | 2025-03-27 | 3.5d | 2.17d | 0d | Brendan Dileo | 28h | 980 | 980 |
| 24 | 3.2.5 | Verify Order Contents |  | 1.17d | 2025-03-27 | 2025-03-28 | 23 | 2025-03-27 | 2025-03-28 | 1.17d | 2.17d | 0d | Brendan Dileo | 9.36h | 327.6 | 327.6 |

| ID | WBS | Task | Type | Duration | Start | Finish | Predecessors | Baseline start | Baseline finish | Baseline duration | Total slack | Free slack | Resources | Work | Cost | Baseline cost |
| --- | --- | --- | --- | --- | --- | --- | --- | --- | --- | --- | --- | --- | --- | --- | --- | --- |
| 25 | 3.3 | **Purchasing VM/Ware Licenses** |  | 9.01d | 2025-03-17 | 2025-03-28 |  | 2025-03-17 | 2025-03-28 | 9.01d | 0d |  |  | 72.08h | 2,306.56 | 2,306.56 |
| 26 | 3.3.1 | Draft Quote Request |  | 2d | 2025-03-17 | 2025-03-19 | 11 | 2025-03-17 | 2025-03-19 | 2d | 0d |  | Baldeep singh | 16h | 512 | 512 |
| 27 | 3.3.2 | Evaluate Quotes |  | 1.17d | 2025-03-19 | 2025-03-20 | 26 | 2025-03-19 | 2025-03-20 | 1.17d | 0d |  | Baldeep singh | 9.36h | 299.52 | 299.52 |
| 28 | 3.3.3 | Place Order |  | 1.17d | 2025-03-20 | 2025-03-21 | 27 | 2025-03-20 | 2025-03-21 | 1.17d | 0d |  | Baldeep singh | 9.36h | 299.52 | 299.52 |
| 29 | 3.3.4 | Receive Goods |  | 3.5d | 2025-03-21 | 2025-03-27 | 28 | 2025-03-21 | 2025-03-27 | 3.5d | 0d |  | Baldeep singh | 28h | 896 | 896 |
| 30 | 3.3.5 | Verify Order Contents |  | 1.17d | 2025-03-27 | 2025-03-28 | 29 | 2025-03-27 | 2025-03-28 | 1.17d | 0d |  | Baldeep singh | 9.36h | 299.52 | 299.52 |
| 31 | 4 | **Installation and Configuration** |  | 11.5d | 2025-03-28 | 2025-04-14 |  | 2025-03-28 | 2025-04-14 | 11.5d | 0d |  |  | 174.64h | 6,082.08 | 6,082.08 |
| 32 | 4.1 | **Install Servers** |  | 11.5d | 2025-03-28 | 2025-04-14 |  | 2025-03-28 | 2025-04-14 | 11.5d | 0d |  |  | 108h | 3,853.6 | 3,853.6 |
| 33 | 4.1.1 | Prepare Installation Enviroment |  | 7.67d | 2025-03-28 | 2025-04-08 | 18, 30 | 2025-03-28 | 2025-04-08 | 7.67d | 0d |  | Nathan Sikkema | 61.36h | 2,454.4 | 2,454.4 |
| 34 | 4.1.2 | Mount Servers in Racks |  | 5.83d | 2025-04-04 | 2025-04-14 | 33FS-2d | 2025-04-04 | 2025-04-14 | 5.83d | 0d |  | <Student 4> | 46.64h | 1,399.2 | 1,399.2 |
| 35 | 4.2 | **Install Clients** |  | 7.33d | 2025-03-28 | 2025-04-08 |  | 2025-03-28 | 2025-04-08 | 7.33d | 2.17d |  |  | 66.64h | 2,228.48 | 2,228.48 |
| 36 | 4.2.1 | Connect & Configure Clients |  | 4d | 2025-03-28 | 2025-04-03 | 24, 30 | 2025-03-28 | 2025-04-03 | 4d | 2.17d | 0d | Brendan Dileo | 32h | 1,120 | 1,120 |
| 37 | 4.2.2 | Deploy Virtual Desktop Settings |  | 4.33d | 2025-04-02 | 2025-04-08 | 36FS-1d | 2025-04-02 | 2025-04-08 | 4.33d | 2.17d |  | Baldeep singh | 34.64h | 1,108.48 | 1,108.48 |
| 38 | 5 | **Testing** |  | 6d | 2025-04-10 | 2025-04-18 |  | 2025-04-10 | 2025-04-18 | 6d | 0d |  |  | 48h | 1,680 | 1,680 |
| 39 | 5.1 | Perform Load and Stress Testing |  | 3.17d | 2025-04-10 | 2025-04-15 | 34FS-2d, 37 | 2025-04-10 | 2025-04-15 | 3.17d | 0d |  | Brendan Dileo | 25.36h | 887.6 | 887.6 |
| 40 | 5.2 | Conduct User Acceptance Testing |  | 2.83d | 2025-04-15 | 2025-04-18 | 39 | 2025-04-15 | 2025-04-18 | 2.83d | 0d |  | Brendan Dileo | 22.64h | 792.4 | 792.4 |
| 41 | 5.3 | End of Initial Testing Phase | milestone | 0d | 2025-04-18 | 2025-04-18 | 40 | 2025-04-18 | 2025-04-18 | 0d | 14.5d |  |  |  |  |  |
| 42 | 6 | **Training** |  | 5d | 2025-04-18 | 2025-04-25 |  | 2025-04-18 | 2025-04-25 | 5d | 0d |  |  | 80h | 2,480 | 2,480 |
| 43 | 6.1 | **Training Location 1** |  | 5d | 2025-04-18 | 2025-04-25 |  | 2025-04-18 | 2025-04-25 | 5d | 0d |  |  | 40h | 1,200 | 1,200 |
| 44 | 6.1.1 | Conduct Simulated Workflows |  | 2d | 2025-04-18 | 2025-04-22 | 40 | 2025-04-18 | 2025-04-22 | 2d | 0d |  | <Student 4> | 16h | 480 | 480 |
| 45 | 6.1.2 | Gather Training Feedback for Improvements |  | 1d | 2025-04-22 | 2025-04-23 | 44 | 2025-04-22 | 2025-04-23 | 1d | 0d |  | <Student 4> | 8h | 240 | 240 |
| 46 | 6.1.3 | Conduct Hands-on Practice |  | 2d | 2025-04-23 | 2025-04-25 | 45 | 2025-04-23 | 2025-04-25 | 2d | 9.5d | 0d | <Student 4> | 16h | 480 | 480 |
| 47 | 6.2 | **Training Location 2** |  | 5d | 2025-04-18 | 2025-04-25 |  | 2025-04-18 | 2025-04-25 | 5d | 0d |  |  | 40h | 1,280 | 1,280 |
| 48 | 6.2.1 | Conduct User Training Sessions |  | 2d | 2025-04-18 | 2025-04-22 | 40 | 2025-04-18 | 2025-04-22 | 2d | 0d |  | Baldeep singh | 16h | 512 | 512 |
| 49 | 6.2.2 | Run Hands-on Practice and Review |  | 1d | 2025-04-22 | 2025-04-23 | 48 | 2025-04-22 | 2025-04-23 | 1d | 0d |  | Baldeep singh | 8h | 256 | 256 |
| 50 | 6.2.3 | Evaluate Training Effectiveness |  | 2d | 2025-04-23 | 2025-04-25 | 49 | 2025-04-23 | 2025-04-25 | 2d | 9.5d | 0d | Baldeep singh | 16h | 512 | 512 |
| 51 | 6.3 | End of Training Phase | milestone | 0d | 2025-04-25 | 2025-04-25 | 46, 50 | 2025-04-25 | 2025-04-25 | 0d | 9.5d |  |  |  |  |  |

| ID | WBS | Task | Duration | Start | Finish | Predecessors | Baseline start | Baseline finish | Baseline duration | Total slack | Resources | Work | Cost | Baseline cost |
| --- | --- | --- | --- | --- | --- | --- | --- | --- | --- | --- | --- | --- | --- | --- |
| 52 | 7 | **Cybersecurity** | 5.17d | 2025-04-23 | 2025-04-30 |  | 2025-04-23 | 2025-04-30 | 5.17d | 0d |  | 41.36h | 1,654.4 | 1,654.4 |
| 53 | 7.1 | Implement Access Controls and Security Policies | 3d | 2025-04-23 | 2025-04-28 | 45, 49 | 2025-04-23 | 2025-04-28 | 3d | 0d | Nathan Sikkema | 24h | 960 | 960 |
| 54 | 7.2 | Conduct Security Audits and Penetration Testing | 2.17d | 2025-04-28 | 2025-04-30 | 53 | 2025-04-28 | 2025-04-30 | 2.17d | 0d | Nathan Sikkema | 17.36h | 694.4 | 694.4 |
| 55 | 8 | **Performance Reports** | 6.33d | 2025-04-30 | 2025-05-09 |  | 2025-04-30 | 2025-05-09 | 6.33d | 0d |  | 50.64h | 1,772.4 | 1,772.4 |
| 56 | 8.1 | Gather System Usage and Performance Data | 2.83d | 2025-04-30 | 2025-05-05 | 54 | 2025-04-30 | 2025-05-05 | 2.83d | 0d | Brendan Dileo | 22.64h | 792.4 | 792.4 |
| 57 | 8.2 | Analyze Data to Identify Bottlenecks | 1.33d | 2025-05-05 | 2025-05-07 | 56 | 2025-05-05 | 2025-05-07 | 1.33d | 0d | Brendan Dileo | 10.64h | 372.4 | 372.4 |
| 58 | 8.3 | Generate and Submit Final Reports | 2.17d | 2025-05-07 | 2025-05-09 | 57 | 2025-05-07 | 2025-05-09 | 2.17d | 0d | Brendan Dileo | 17.36h | 607.6 | 607.6 |
